# cronograma gantt

Schedule from MS Project, 2022-01-01 to 2023-03-24.

## Calendars

- Estándar: Mon-Sun 09:00-13:00, 15:00-19:00. Exceptions (off unless hours are given): 2022-01-03, 2022-01-06, 2022-04-14 to 2022-04-15, 2022-06-07, 2022-06-24, 2022-06-29, 2022-07-28 to 2022-07-29, 2022-08-30, 2022-11-01 to 2022-11-02, 2022-12-08.

## Schedule

| ID | WBS | Task | Type | Duration | Start | Finish | Predecessors | Total slack |
| --- | --- | --- | --- | --- | --- | --- | --- | --- |
| 1 | 1 | **OBRAS PROVISIONALES, TRABAJOS PRELIMINARES, SEGURIDAD Y SALUD** |  | 7d | 2022-01-01 | 2022-01-09 |  | 0d |
| 2 | 1.1 | **Obras Provisionales y Trabajos Preliminares** |  | 7d | 2022-01-01 | 2022-01-09 |  | 0d |
| 3 | 1.1.1 | **Construcciones Provisionales** |  | 3d | 2022-01-01 | 2022-01-04 |  | 0d |
| 4 | 1.1.1.1 | ALMACEN, OFICINA Y CASETA DE GUARDIANIA | manual | 1d | 2022-01-01 | 2022-01-01 |  |  |
| 5 | 1.1.1.2 | CARTEL DE OBRA 2.40x3.60 m. | manual | 1d | 2022-01-01 | 2022-01-01 | 4SS |  |
| 6 | 1.1.1.3 | SERVICIOS HIGIENICOS | manual | 1d | 2022-01-01 | 2022-01-01 |  |  |
| 7 | 1.1.1.4 | CERCO PROVISIONAL DE TRIPLAY DE 6.0 mm | manual | 2d | 2022-01-02 | 2022-01-04 | 6SS, 4 |  |
| 8 | 1.1.2 | **Instalaciones Provisionales** |  | 1d | 2022-01-01 | 2022-01-01 |  | 0d |
| 9 | 1.1.2.1 | AGUA PARA LA CONSTRUCCIÓN | manual | 1d | 2022-01-01 | 2022-01-01 | 4SS |  |
| 10 | 1.1.2.2 | ENERGIA ELÉCTRICA PARA LA CONSTRUCCIÓN | manual | 1d | 2022-01-01 | 2022-01-01 | 9SS |  |
| 11 | 1.1.3 | **Demoliciones** |  | 1d | 2022-01-02 | 2022-01-02 |  | 0d |
| 12 | 1.1.3.1 | DEMOLICION DE ESTRUCTURA EXISTENTE | manual | 1d | 2022-01-02 | 2022-01-02 | 10 |  |
| 13 | 1.1.4 | **Transporte de Equipo y Maquinaria** |  | 0d | 2022-01-03 | 2022-01-03 |  | 0d |
| 14 | 1.1.4.1 | MOVILIZACION DE EQUIPO Y MAQUINARIA | manual | 1d | 2022-01-03 | 2022-01-03 | 12 |  |
| 15 | 1.1.5 | **Trazo, Niveles y Replanteo** |  | 2d | 2022-01-08 | 2022-01-09 |  | 0d |
| 16 | 1.1.5.1 | TRAZO Y REPLANTEO PRELIMINAR | manual | 2d | 2022-01-08 | 2022-01-09 | 12, 7, 14 |  |
| 17 | 1.1.5.2 | REPLANTEO DURANTE EL PROCESO | manual | 2d | 2022-01-08 | 2022-01-09 | 16SS |  |
| 18 | 1.2 | **Seguridad y Salud** |  | 1d | 2022-01-08 | 2022-01-08 |  | 0d |
| 19 | 1.2.1 | ELABORACIÓN, IMPLEMENTACIÓN Y ADMINISTRACIÓN DEL PLAN DE SEGURIDAD Y SALUD EN EL TRABAJO | manual | 1d | 2022-01-08 | 2022-01-08 | 7 |  |
| 20 | 1.2.2 | EQUIPOS DE PROTECCIÓN INDIVIDUAL | manual | 1d | 2022-01-08 | 2022-01-08 | 19SS |  |
| 21 | 1.2.3 | EQUIPOS DE PROTECCIÓN COLECTIVA | manual | 1d | 2022-01-08 | 2022-01-08 | 19SS |  |
| 22 | 1.2.4 | SEÑALIZACIÓN TEMPORAL DE SEGURIDAD | manual | 1d | 2022-01-08 | 2022-01-08 | 19SS |  |
| 23 | 1.2.5 | CAPACITACIÓN EN SEGURIDAD Y SALUD | manual | 1d | 2022-01-08 | 2022-01-08 | 19SS |  |
| 24 | 1.2.6 | RECURSOS PARA RESPUESTAS ANTE EMERGENCIAS EN SEGURIDAD Y SALUD EN EL TRABAJO | manual | 1d | 2022-01-08 | 2022-01-08 | 19SS |  |

| ID | WBS | Task | Type | Duration | Start | Finish | Predecessors | Total slack |
| --- | --- | --- | --- | --- | --- | --- | --- | --- |
| 25 | 2 | **ESTRUCTURAS** |  | 284d | 2022-01-01 | 2022-10-21 |  | 0d |
| 26 | 2.1 | **Movimiento de Tierras** |  | 45d | 2022-01-01 | 2022-02-16 |  | 0d |
| 27 | 2.1.1 | **Cortes** |  | 16d | 2022-01-01 | 2022-01-18 |  | 0d |
| 28 | 2.1.1.1 | CORTE MASIVO DE TERRENO CON MAQUINARIA | manual | 16d | 2022-01-01 | 2022-01-18 | 14SS-0.02d, 24SS-0.02d |  |
| 29 | 2.1.2 | **Eliminacion de Material Excedente** |  | 45d | 2022-01-01 | 2022-02-16 |  | 0d |
| 30 | 2.1.2.1 | ELIMINACION DE MATERIAL EXCEDENTE CON MAQUINARIA | manual | 45d | 2022-01-01 | 2022-02-16 | 28SS |  |
| 31 | 2.2 | **Obras de Concreto Armado** |  | 274d | 2022-01-02 | 2022-10-12 |  | 0d |
| 32 | 2.2.1 | **Losa de cimentación** |  | 101d | 2022-01-02 | 2022-04-16 |  | 0d |
| 33 | 2.2.1.1 | LOSA DE CIMENTACION - CONCRETO f'c=280 kg/cm2 | manual | 20d | 2022-01-03 | 2022-01-23 | 34SS |  |
| 34 | 2.2.1.2 | LOSA DE CIMENTACION - ENCOFRADO Y DESENCOFRADO | manual | 21d | 2022-01-02 | 2022-01-24 | 35SS |  |
| 35 | 2.2.1.3 | LOSA DE CIMENTACION - ACERO fy=4200 kg/cm2 | manual | 101d | 2022-01-02 | 2022-04-16 | 39SS |  |
| 36 | 2.2.2 | **Vigas de Cimentación** |  | 68d | 2022-01-02 | 2022-03-12 |  | 0d |
| 37 | 2.2.2.1 | VIGAS DE CIMENTACIÓN - CONCRETO f'c=280 kg/cm2 | manual | 14d | 2022-01-06 | 2022-01-19 | 38SS |  |
| 38 | 2.2.2.2 | VIGAS DE CIMENTACION - ENCOFRADO Y DESENCOFRADO | manual | 3d | 2022-01-04 | 2022-01-06 | 39SS |  |
| 39 | 2.2.2.3 | VIGAS DE CIMENTACIÓN - ACERO fy=4200 kg/cm2 | manual | 68d | 2022-01-02 | 2022-03-12 | 30SS |  |
| 40 | 2.2.3 | **Placas** |  | 96d | 2022-01-23 | 2022-04-30 |  | 0d |
| 41 | 2.2.3.1 | PLACAS - CONCRETO f'c=280 kg/cm2 | manual | 34d | 2022-01-25 | 2022-02-27 | 42SS |  |
| 42 | 2.2.3.2 | PLACAS - ENCOFRADO Y DESENCOFRADO | manual | 32d | 2022-01-23 | 2022-02-23 | 43SS |  |
| 43 | 2.2.3.3 | PLACAS - ACERO fy=4200 kg/cm2 | manual | 96d | 2022-01-23 | 2022-04-30 | 37 |  |
| 44 | 2.2.4 | **Columnas** |  | 212d | 2022-01-23 | 2022-08-30 |  | 0d |
| 45 | 2.2.4.1 | COLUMNAS - CONCRETO f'c=280 kg/cm2 | manual | 212d | 2022-01-24 | 2022-08-30 | 46SS, 47FF |  |
| 46 | 2.2.4.2 | COLUMNAS - ENCOFRADO Y DESENCOFRADO | manual | 43d | 2022-01-23 | 2022-03-06 | 47SS |  |
| 47 | 2.2.4.3 | COLUMNAS - ACERO fy=4200 kg/cm2 | manual | 212d | 2022-01-23 | 2022-08-29 | 37 |  |
| 48 | 2.2.5 | **Vigas** |  | 217d | 2022-02-03 | 2022-09-15 |  | 0d |
| 49 | 2.2.5.1 | VIGAS - CONCRETO f'c=280 kg/cm2 | manual | 124d | 2022-05-09 | 2022-09-15 | 51FF, 50 |  |
| 50 | 2.2.5.2 | VIGAS - ENCOFRADO Y DESENCOFRADO | manual | 55d | 2022-02-03 | 2022-03-29 | 45SS+0.02d |  |
| 51 | 2.2.5.3 | VIGAS - ACERO fy=4200 kg/cm2 | manual | 201d | 2022-02-03 | 2022-08-29 | 50SS |  |

| ID | WBS | Task | Type | Duration | Start | Finish | Predecessors | Total slack |
| --- | --- | --- | --- | --- | --- | --- | --- | --- |
| 52 | 2.2.6 | **Losas Macizas** |  | 2d | 2022-01-27 | 2022-01-28 |  | 0d |
| 53 | 2.2.6.1 | LOSAS MACIZAS - CONCRETO f'c=280 kg/cm2 | manual | 1d | 2022-01-28 | 2022-01-28 | 55FF, 54 |  |
| 54 | 2.2.6.2 | LOSAS MACIZAS - ENCOFRADO Y DESENCOFRADO | manual | 1d | 2022-01-27 | 2022-01-27 | 41SS |  |
| 55 | 2.2.6.3 | LOSAS MACIZAS - ACERO fy=4200 kg/cm2 | manual | 2d | 2022-01-27 | 2022-01-28 | 54SS |  |
| 56 | 2.2.7 | **Losa Aligerada** |  | 172d | 2022-04-15 | 2022-10-10 |  | 0d |
| 57 | 2.2.7.1 | LOSA ALIGERADA - CONCRETO f'c=280 kg/cm2 | manual | 21d | 2022-09-20 | 2022-10-10 | 60, 49FF |  |
| 58 | 2.2.7.2 | LOSA ALIGERADA - ENCOFRADO Y DESENCOFRADO | manual | 35d | 2022-04-15 | 2022-05-19 | 50FS+0.01d |  |
| 59 | 2.2.7.3 | LOSA ALIGERADA - ACERO fy=4200 kg/cm2 | manual | 76d | 2022-05-27 | 2022-08-15 | 58 |  |
| 60 | 2.2.7.4 | LOSA ALIGERADA - LADR. HUECO 15x30x30cm | manual | 3d | 2022-09-06 | 2022-09-08 | 59 |  |
| 61 | 2.2.8 | **Escaleras** |  | 133d | 2022-05-27 | 2022-10-12 |  | 0d |
| 62 | 2.2.8.1 | ESCALERAS - CONCRETO f'c=210 kg/cm2 | manual | 9d | 2022-10-04 | 2022-10-12 | 64FF, 63, 57FF |  |
| 63 | 2.2.8.2 | ESCALERAS - ENCOFRADO Y DESENCOFRADO | manual | 4d | 2022-05-27 | 2022-05-30 | 58 |  |
| 64 | 2.2.8.3 | ESCALERAS - ACERO fy=4200 kg/cm2 | manual | 17d | 2022-06-01 | 2022-06-18 | 63 |  |
| 65 | 2.3 | **Estructuras Metálicas y Coberturas** |  | 151d | 2022-05-18 | 2022-10-21 |  | 0d |
| 66 | 2.3.1 | ESTRUCTURA METÁLICA ASTM A36 HABILITADO | manual | 139d | 2022-05-18 | 2022-10-09 | 62FF+0.01d |  |
| 67 | 2.3.2 | MONTAJE DE ESTRUCTURA METALICA | manual | 25d | 2022-09-27 | 2022-10-21 | 66FF |  |
| 68 | 3 | **ARQUITECTURA** |  | 414d | 2022-01-24 | 2023-03-24 |  | 0d |
| 69 | 3.1 | **Muros y Tabiques de Albañilería** |  | 290d | 2022-01-24 | 2022-11-19 |  | 0d |
| 70 | 3.1.1 | MURO DE LADRILLO KK TIPO IV SOGA M:1:1:4 e=1.5cm | manual | 290d | 2022-01-24 | 2022-11-19 | 33 |  |
| 71 | 3.1.2 | MURO DE LADRILLO KK TIPO IV CABEZA M:1:1:4 e=1.5cm | manual | 193d | 2022-01-24 | 2022-08-11 | 70SS |  |
| 72 | 3.2 | **Vidrios, Cristales y Similares** |  | 256d | 2022-06-23 | 2023-03-13 |  | 0d |
| 73 | 3.2.1 | PUERTA DE VIDRIO TEMPLADO INCOLORO DE 8mm | manual | 90d | 2022-11-23 | 2023-02-21 | 89 |  |
| 74 | 3.2.2 | VIDRIO CRISTAL CRUDO INCOLORO 8mm PARA VENTANAS | manual | 77d | 2022-06-23 | 2022-09-12 | 82 |  |
| 75 | 3.2.3 | MAMPARA DE VIDRIO TEMPLADO INCOLORO DE 10mm | manual | 10d | 2023-03-04 | 2023-03-13 | 113 |  |

| ID | WBS | Task | Type | Duration | Start | Finish | Predecessors | Total slack |
| --- | --- | --- | --- | --- | --- | --- | --- | --- |
| 76 | 3.3 | **Revoques, Enlucidos y Molduras** |  | 303d | 2022-01-24 | 2022-12-02 |  | 0d |
| 77 | 3.3.1 | TARRAJEO PRIMARIO, MORTERO C:A 1:5 | manual | 102d | 2022-02-03 | 2022-05-17 | 70SS+0.02d |  |
| 78 | 3.3.2 | TARRAJEO DE MURO: INTERIOR Y EXTERIOR | manual | 144d | 2022-02-03 | 2022-07-01 | 77SS |  |
| 79 | 3.3.3 | TARRAJEO EN MUROS DE CONCRETO (1:5) | manual | 66d | 2022-02-03 | 2022-04-09 | 78SS |  |
| 80 | 3.3.4 | TARRAJEO EN COLUMNAS | manual | 1d | 2022-04-10 | 2022-04-10 | 79 |  |
| 81 | 3.3.5 | TARRAJEO EN VIGAS | manual | 147d | 2022-01-24 | 2022-06-22 | 71SS |  |
| 82 | 3.3.6 | VESTIDURA EN DERRAMES (1:5) | manual | 45d | 2022-05-08 | 2022-06-22 | 81FF |  |
| 83 | 3.3.7 | TAPAJUNTA METALICA ENTRE MODULOS EN TECHO | manual | 12d | 2022-11-21 | 2022-12-02 | 70 |  |
| 84 | 3.3.8 | TARRAJEO EN FONDO DE ESCALERAS C:A 1:5 | manual | 35d | 2022-06-23 | 2022-07-31 | 82 |  |
| 85 | 3.3.9 | REVESTIMIENTO DE ESCALERA PASO Y CONTRAPASO C:A 1:5 | manual | 69d | 2022-05-19 | 2022-07-31 | 84FF |  |
| 86 | 3.3.10 | REVESTIDO EN ESCALERA | manual | 97d | 2022-08-01 | 2022-11-08 | 84 |  |
| 87 | 3.3.11 | FORJADO Y REVESTIMIENTO DE DESCANSO | manual | 9d | 2022-08-01 | 2022-08-09 | 84 |  |
| 88 | 3.4 | **Cielo Rasos** |  | 290d | 2022-01-26 | 2022-11-21 |  | 0d |
| 89 | 3.4.1 | CIELO RASO CON YESO CON CINTAS | manual | 290d | 2022-01-26 | 2022-11-21 | 70SS |  |
| 90 | 3.5 | **Carpintería Metálica y Herrería** |  | 28d | 2022-07-21 | 2022-08-19 |  | 0d |
| 91 | 3.5.1 | BARANDA DE TUBO DE Fo.Go. 2" LARGUEROS 1 1/2" | manual | 11d | 2022-08-01 | 2022-08-11 | 85 |  |
| 92 | 3.5.2 | PASAMANOS ESCALERA TUBO Fo.Go. 2" | manual | 8d | 2022-08-12 | 2022-08-19 | 91 |  |
| 93 | 3.5.3 | CANTONERA DE ALUMINIO 35x25mm EN PASOS DE ESCALERA | manual | 9d | 2022-07-21 | 2022-07-31 | 85FF |  |
| 94 | 3.6 | **Pisos y Pavimentos** |  | 224d | 2022-06-23 | 2023-02-09 |  | 0d |
| 95 | 3.6.1 | FALSO PISO DE 4" DE CONCRETO | manual | 10d | 2022-06-23 | 2022-07-04 | 82 |  |
| 96 | 3.6.2 | CONTRAPISO DE 50mm, PARA RECIBIR BALDOZA DE CERÁMICO | manual | 46d | 2022-07-05 | 2022-08-21 | 95 |  |
| 97 | 3.6.3 | PISO PORCELANATO 60 X 60 ANTIDESLIZANTE | manual | 214d | 2022-07-05 | 2023-02-09 | 96SS |  |
| 98 | 3.6.4 | PISO CERÁMICO EN BAÑO 45 x 45 | manual | 31d | 2022-07-05 | 2022-08-06 | 96SS |  |
| 99 | 3.6.5 | PISOS DE CONCRETO PULIDO Y BRUÑADO e=2" S/COLOREAR | manual | 9d | 2022-06-23 | 2022-07-03 | 82 |  |
| 100 | 3.6.6 | PISO FROTACHADO - CONCRETO F´C=175 KG/CM2 | manual | 1d | 2022-06-23 | 2022-06-23 | 82 |  |
| 101 | 3.6.7 | PISO PIEDRA LAJA | manual | 65d | 2022-07-05 | 2022-09-10 | 95, 99, 100 |  |
| 102 | 3.6.8 | RAMPAS DE CONCRETO 175 kg/cm2 e=5" BRUÑADO S/DISEÑO | manual | 2d | 2022-07-05 | 2022-07-06 | 95 |  |
| 103 | 3.6.9 | TIERRA AGRICOLA TRATADA E=10CM | manual | 1d | 2022-11-23 | 2022-11-23 | 89 |  |

| ID | WBS | Task | Type | Duration | Start | Finish | Predecessors | Total slack |
| --- | --- | --- | --- | --- | --- | --- | --- | --- |
| 104 | 3.7 | **Carpintería de Madera** |  | 59d | 2023-01-25 | 2023-03-24 |  | 0d |
| 105 | 3.7.1 | PUERTA DE MADERA TABLERO REBAJADO DE 4.5mm CEDRO | manual | 11d | 2023-03-14 | 2023-03-24 | 113, 73, 116, 75 |  |
| 106 | 3.7.2 | PUERTA DE GARAJE AUTOMATICA SECCIONALES | manual | 5d | 2023-01-25 | 2023-01-29 |  |  |
| 107 | 3.8 | **Contrazócalos** |  | 139d | 2022-07-05 | 2022-11-25 |  | 0d |
| 108 | 3.8.1 | CONTRAZÓCALO S/COLOREAR H=10cm MEZCLA 1:2 e=2.0 cm | manual | 139d | 2022-07-05 | 2022-11-25 | 97SS |  |
| 109 | 3.9 | **Zócalos** |  | 121d | 2022-07-05 | 2022-11-07 |  | 0d |
| 110 | 3.9.1 | ZÓCALO CON CERÁMICO BLANCO DE 45 x 45 cm | manual | 121d | 2022-07-05 | 2022-11-07 | 98SS |  |
| 111 | 3.10 | **Pintura** |  | 100d | 2022-11-23 | 2023-03-03 |  | 0d |
| 112 | 3.10.1 | PINTURA LATEX 2 MANOS EN CIELO RASO Y VIGAS | manual | 45d | 2022-11-23 | 2023-01-07 | 89 |  |
| 113 | 3.10.2 | PINTURA LATEX 2 MANOS EN MURO Y COLUMNA | manual | 99d | 2022-11-24 | 2023-03-03 | 112SS |  |
| 114 | 3.10.3 | PINTURA ESMALTE, DOS MANOS EN DERRAMES BOLEADOS | manual | 8d | 2022-11-26 | 2022-12-03 | 112SS+0.01d |  |
| 115 | 3.10.4 | PINTURA BARNIZ EN CARPINTERIA DE MADERA | manual | 28d | 2022-11-28 | 2022-12-26 | 112SS+0.01d |  |
| 116 | 3.10.5 | PINT.ANTICOR.Y ESMALTE 2 MANOS-PTA/VENT. | manual | 9d | 2023-01-25 | 2023-02-02 | 106SS |  |
| 117 | 4 | **INSTALACIONES SANITARIAS** |  | 340d | 2022-01-24 | 2023-01-09 |  | 0d |
| 118 | 4.1 | **Movimiento de tierras** |  | 51d | 2022-01-24 | 2022-03-15 |  | 0d |
| 119 | 4.1.1 | **Movimiento de tierras** |  | 51d | 2022-01-24 | 2022-03-15 |  | 0d |
| 120 | 4.1.1.1 | EXCAVACION DE ZANJAS PARA REDES EXT.SANIT.ELECT. | manual | 13d | 2022-01-24 | 2022-02-05 | 70SS |  |
| 121 | 4.1.1.2 | REFINE Y NIVELACION DE ZANJA PARA TUBERIA | manual | 1d | 2022-02-06 | 2022-02-06 | 120 |  |
| 122 | 4.1.1.3 | CAMA DE APOYO (e=0.10m) - ARENA GRUESA | manual | 35d | 2022-02-07 | 2022-03-13 | 121 |  |
| 123 | 4.1.1.4 | RELLENO COMPACTADO C/MATERIAL PROPIO, C/PLANCHA COMPACTADORA | manual | 1d | 2022-03-14 | 2022-03-14 | 122 |  |
| 124 | 4.1.1.5 | ELIMINACION MATERIAL EXCEDENTE | manual | 1d | 2022-03-15 | 2022-03-15 | 123 |  |
| 125 | 4.2 | **Desagüe y Ventilación** |  | 289d | 2022-03-16 | 2023-01-09 |  | 0d |
| 126 | 4.2.1 | **Salida de Desagüe y Ventilación** |  | 41d | 2022-03-20 | 2022-05-01 |  | 0d |
| 127 | 4.2.1.1 | SALIDA DE DESAGUE EN PVC SAP Ø DE 2" | manual | 35d | 2022-03-20 | 2022-04-25 | 135 |  |
| 128 | 4.2.1.2 | SALIDA DE DESAGUE EN PVC SAP Ø DE 4" | manual | 26d | 2022-03-20 | 2022-04-14 | 127SS |  |
| 129 | 4.2.1.3 | SALIDA DE VENTILACIÓN EN PVC SAP Ø DE 3" | manual | 6d | 2022-04-26 | 2022-05-01 | 128FF, 127 |  |

| ID | WBS | Task | Type | Duration | Start | Finish | Predecessors | Total slack |
| --- | --- | --- | --- | --- | --- | --- | --- | --- |
| 130 | 4.2.2 | **Redes de Distribución** |  | 31d | 2022-04-26 | 2022-05-26 |  | 0d |
| 131 | 4.2.2.1 | TUBERIA PVC CP P/DESAGUE Ø4" | manual | 7d | 2022-04-26 | 2022-05-02 | 135, 127 |  |
| 132 | 4.2.2.2 | TUBERIA PVC CP P/DESAGUE Ø2" | manual | 14d | 2022-05-03 | 2022-05-16 | 131 |  |
| 133 | 4.2.2.3 | TUBERIA PVC CP P/VENTILACION Ø3" | manual | 10d | 2022-05-17 | 2022-05-26 | 132, 129 |  |
| 134 | 4.2.3 | **Redes Colectoras Desagüe** |  | 4d | 2022-03-16 | 2022-03-19 |  | 0d |
| 135 | 4.2.3.1 | RED COLECTORA CON TUBERIA PVC-SAP Ø6" | manual | 4d | 2022-03-16 | 2022-03-19 | 124 |  |
| 136 | 4.2.4 | **Accesorios de Redes** |  | 29d | 2022-05-03 | 2022-05-31 |  | 0d |
| 137 | 4.2.4.1 | REGISTRO ROSCADO DE BRONCE 4" PROVISION Y COLOCACION | manual | 5d | 2022-05-03 | 2022-05-07 | 131 |  |
| 138 | 4.2.4.2 | SUMIDERO DE BRONCE 2" PROVISION Y COLOCACION | manual | 10d | 2022-05-08 | 2022-05-17 | 137 |  |
| 139 | 4.2.4.3 | SOMBRERO DE VENTILACION 3" | manual | 2d | 2022-05-18 | 2022-05-19 | 138 |  |
| 140 | 4.2.4.4 | CODO PVC-CP 2"x90° | manual | 15d | 2022-05-17 | 2022-05-31 | 132 |  |
| 141 | 4.2.4.5 | CODO PVC-CP 4"x45° | manual | 1d | 2022-05-03 | 2022-05-03 | 131 |  |
| 142 | 4.2.4.6 | CODO PVC-CP 4"x90° | manual | 1d | 2022-05-04 | 2022-05-04 | 141 |  |
| 143 | 4.2.4.7 | YEE SIMPLE PVC-CP 2" | manual | 5d | 2022-05-05 | 2022-05-09 | 142 |  |
| 144 | 4.2.4.8 | YEE SIMPLE PVC-CP 4" | manual | 1d | 2022-05-10 | 2022-05-10 | 143 |  |
| 145 | 4.2.4.9 | YEE SIMPLE PVC-CP C/REDUCCION 4" A 2" | manual | 5d | 2022-05-11 | 2022-05-15 | 144 |  |
| 146 | 4.2.5 | **Camaras de Inspección** |  | 4d | 2022-03-20 | 2022-03-23 |  | 0d |
| 147 | 4.2.5.1 | CAJA DE REG.30"x60" C/TAPA, CONCRETO REFORZADO | manual | 4d | 2022-03-20 | 2022-03-23 | 135 |  |
| 148 | 4.2.6 | **Empalmes y Pruebas Hidraúlicas** |  | 2d | 2022-06-01 | 2022-06-02 |  | 0d |
| 149 | 4.2.6.1 | PRUEBA HIDRAULICA DE ESCORRENTIA DE TUBERIAS DE DESAGUE | manual | 1d | 2022-06-01 | 2022-06-01 | 140 |  |
| 150 | 4.2.6.2 | PRUEBA HIDRAULICA Y DESINFECCION | manual | 1d | 2022-06-02 | 2022-06-02 | 149 |  |
| 151 | 4.2.7 | **Aparatos Sanitarios y Accesorios** |  | 250d | 2022-04-26 | 2023-01-09 |  | 0d |
| 152 | 4.2.7.1 | **Aparatos Sanitarios** |  | 176d | 2022-04-26 | 2022-10-24 |  | 0d |
| 153 | 4.2.7.1.1 | INODORO CON TANQUE BAJO DE LOSA 1RA. CALIDAD ADULTO(NAC. BLANCO) | manual | 28d | 2022-04-26 | 2022-05-23 | 127 |  |
| 154 | 4.2.7.1.2 | URINARIO DE LOSA BLANCO TIPO CADET O SIMILAR | manual | 11d | 2022-04-29 | 2022-05-09 | 153SS+0.01d |  |
| 155 | 4.2.7.1.3 | LAVATORIO DE LOSA BLANCA DE PRIMERA C/GRIFERIA PERILLA | manual | 28d | 2022-05-01 | 2022-05-28 | 154SS |  |
| 156 | 4.2.7.1.4 | COLOCACION DE APARATOS SANITARIOS | manual | 176d | 2022-04-26 | 2022-10-24 | 153SS |  |

| ID | WBS | Task | Type | Duration | Start | Finish | Predecessors | Total slack |
| --- | --- | --- | --- | --- | --- | --- | --- | --- |
| 157 | 4.2.7.2 | **Accesorios Sanitarios** |  | 222d | 2022-05-24 | 2023-01-09 |  | 0d |
| 158 | 4.2.7.2.1 | PAPELERA DE LOSA Y BARRA PLASTICA | manual | 9d | 2022-05-24 | 2022-06-01 | 153 |  |
| 159 | 4.2.7.2.2 | GANCHO DE ACERO INOX. INC. ACCESORIOS DE FIJACION | manual | 6d | 2022-06-02 | 2022-06-07 | 158 |  |
| 160 | 4.2.7.2.3 | JABONERA METALICA DE SOBREPONER | manual | 35d | 2022-06-08 | 2022-07-14 | 159 |  |
| 161 | 4.2.7.2.4 | BARRA ACERO INOXIDABLE D=1 1/2" P/DISCAPACITADOS | manual | 14d | 2022-07-15 | 2022-07-28 | 160 |  |
| 162 | 4.2.7.2.5 | SECADORA AUTOMATICA DE MANOS WORLD DRYER | manual | 26d | 2022-07-29 | 2022-08-23 | 161 |  |
| 163 | 4.2.7.2.6 | COLOCACION DE APARATOS SANITARIOS | manual | 222d | 2022-05-24 | 2023-01-09 | 158SS, 162FF |  |
| 164 | 4.3 | **Sistema de Agua Fría** |  | 75d | 2022-02-03 | 2022-04-20 |  | 0d |
| 165 | 4.3.1 | **Salida de Agua Fría** |  | 40d | 2022-02-03 | 2022-03-14 |  | 0d |
| 166 | 4.3.1.1 | SALIDA DE AGUA FRIA CON TUBERIA DE PVC DE 3/4" | manual | 40d | 2022-02-03 | 2022-03-14 | 168SS |  |
| 167 | 4.3.2 | **Redes de alimentacion de agua** |  | 24d | 2022-02-03 | 2022-02-26 |  | 0d |
| 168 | 4.3.2.1 | RED DE ALIMENTACION TUBERIA PVC CLASE 10 DE 3/4" | manual | 8d | 2022-02-03 | 2022-02-10 | 71SS+0.02d |  |
| 169 | 4.3.2.2 | RED DE ALIMENTACION TUBERIA PVC CLASE 10 DE 1" | manual | 1d | 2022-02-03 | 2022-02-03 | 168SS |  |
| 170 | 4.3.2.3 | RED DE ALIMENTACION TUBERIA PVC CLASE 10 DE 2" | manual | 2d | 2022-02-03 | 2022-02-04 | 168SS |  |
| 171 | 4.3.2.4 | CODO PVC-SAP CLASE 10 R 2" x 90° | manual | 1d | 2022-02-05 | 2022-02-05 | 170 |  |
| 172 | 4.3.2.5 | CODO PVC-SAP CLASE 10 R 1 1/2" x 90° | manual | 1d | 2022-02-04 | 2022-02-04 | 169 |  |
| 173 | 4.3.2.6 | CODO PVC-SAP CLASE 10 R 3/4" x 90° | manual | 16d | 2022-02-11 | 2022-02-26 | 168 |  |
| 174 | 4.3.2.7 | TEE PVC-SAP CLASE 10 R DE Ø 2" | manual | 1d | 2022-02-05 | 2022-02-05 | 170 |  |
| 175 | 4.3.2.8 | TEE PVC-SAP CLASE 10 R Ø 1 1/2" | manual | 1d | 2022-02-04 | 2022-02-04 | 169 |  |
| 176 | 4.3.2.9 | TEE PVC-SAP CLASE 10 R DE 3/4" | manual | 1d | 2022-02-11 | 2022-02-11 | 168 |  |
| 177 | 4.3.2.10 | REDUCCION PVC-SAP CLASE 10 R DE 2" A 1 1/2" | manual | 1d | 2022-02-05 | 2022-02-05 | 170 |  |
| 178 | 4.3.2.11 | REDUCCION PVC-SAP CLASE 10 R DE 2" A 1" | manual | 1d | 2022-02-05 | 2022-02-05 | 170 |  |
| 179 | 4.3.2.12 | REDUCCION PVC-SAP CLASE 10 R DE 2" A 3/4" | manual | 1d | 2022-02-05 | 2022-02-05 | 172 |  |
| 180 | 4.3.2.13 | REDUCCION PVC-SAP CLASE 10 R DE 1 1/2" A 3/4" | manual | 1d | 2022-02-11 | 2022-02-11 | 168 |  |

| ID | WBS | Task | Type | Duration | Start | Finish | Predecessors | Total slack |
| --- | --- | --- | --- | --- | --- | --- | --- | --- |
| 181 | 4.3.3 | **Válvulas y Llaves** |  | 6d | 2022-03-19 | 2022-03-24 |  | 0d |
| 182 | 4.3.3.1 | VALVULA ESFERICA DE BRONCE 3/4" | manual | 4d | 2022-03-19 | 2022-03-22 |  |  |
| 183 | 4.3.3.2 | VALVULA ESFERICA DE BRONCE 2" | manual | 1d | 2022-03-23 | 2022-03-23 | 182 |  |
| 184 | 4.3.3.3 | VALVULA FLOTADOR 1" | manual | 1d | 2022-03-24 | 2022-03-24 | 183 |  |
| 185 | 4.3.4 | **Equipos y otras instalaciones** |  | 25d | 2022-03-25 | 2022-04-20 |  | 0d |
| 186 | 4.3.4.1 | ELECTROBOMBAS DE 10 HP, HDT=47.92 m de VELOC. VARIABLE Y PRESION CONSTANTE (INCLUYE ACCESORIOS) | manual | 3d | 2022-03-25 | 2022-03-27 | 184 |  |
| 187 | 4.3.4.2 | TANQUE PULMON DE 100 GALONES (INCLUYE ACCESORIOS) | manual | 1d | 2022-03-28 | 2022-03-28 | 186 |  |
| 188 | 4.3.4.3 | CAJAS DE VÁLVULAS COMPUERTA EN PARED | manual | 21d | 2022-03-29 | 2022-04-20 | 187 |  |
| 189 | 4.4 | **Sistema de agua contra incendio** |  | 59d | 2022-04-21 | 2022-06-19 |  | 0d |
| 190 | 4.4.1 | **REDES DE ALIMENTACION** |  | 22d | 2022-04-21 | 2022-05-12 |  | 0d |
| 191 | 4.4.1.1 | SUMINISTRO E INST. TUBERIA DE ACERO SCH-40 DE 1" (ADOSADA EN MURO) | manual | 2d | 2022-04-21 | 2022-04-22 | 188 |  |
| 192 | 4.4.1.2 | SUMINISTRO E INST. TUBERIA DE ACERO SCH-40 DE 2 1/2" (ADOSADA EN MURO) | manual | 17d | 2022-04-23 | 2022-05-09 | 191 |  |
| 193 | 4.4.1.3 | SUMINISTRO E INST .TUBERIA DE ACERO SCH-40 DE 4" (ADOSADA EN MURO) | manual | 3d | 2022-05-10 | 2022-05-12 | 192 |  |
| 194 | 4.4.2 | **ACCESORIOS** |  | 21d | 2022-05-13 | 2022-06-02 |  | 0d |
| 195 | 4.4.2.1 | CODO DE ACERO SCH-40 DE 1"x90° | manual | 1d | 2022-05-13 | 2022-05-13 | 193 |  |
| 196 | 4.4.2.2 | CODO DE ACERO SCH-40 DE 2 1/2"x90° | manual | 7d | 2022-05-14 | 2022-05-20 | 195 |  |
| 197 | 4.4.2.3 | CODO DE ACERO SCH-40 DE 4"x90° | manual | 1d | 2022-05-21 | 2022-05-21 | 196 |  |
| 198 | 4.4.2.4 | REDUCCION CONCENTRICA ACERO SCH-40 DE 2 1/2" a 1" | manual | 1d | 2022-05-22 | 2022-05-22 | 197 |  |
| 199 | 4.4.2.5 | REDUCCION CONCENTRICA ACERO SCH-40 DE 4" a 2 1/2" | manual | 1d | 2022-05-23 | 2022-05-23 | 198 |  |
| 200 | 4.4.2.6 | TEE REDUCCION ACERO SCH-40 DE 2 1/2" a 1" x 90° | manual | 1d | 2022-05-24 | 2022-05-24 | 199 |  |
| 201 | 4.4.2.7 | TEE REDUCCION ACERO SCH-40 DE 4" a 21/2" x 90° | manual | 1d | 2022-05-25 | 2022-05-25 | 200 |  |
| 202 | 4.4.2.8 | TEE DE ACERO SCH-40 DE 1" | manual | 1d | 2022-05-26 | 2022-05-26 | 201 |  |
| 203 | 4.4.2.9 | TEE DE ACERO SCH-40 DE 2 1/2" | manual | 1d | 2022-05-27 | 2022-05-27 | 202 |  |
| 204 | 4.4.2.10 | TEE DE ACERO SCH-40 DE 4" | manual | 1d | 2022-05-28 | 2022-05-28 | 203 |  |
| 205 | 4.4.2.11 | COLGADORES Y ANCLAJE DE TUBERIA | manual | 5d | 2022-05-29 | 2022-06-02 | 204 |  |

| ID | WBS | Task | Type | Duration | Start | Finish | Predecessors | Total slack |
| --- | --- | --- | --- | --- | --- | --- | --- | --- |
| 206 | 4.4.3 | **ROCIADORES CONTRA INCENDIO** |  | 1d | 2022-06-03 | 2022-06-03 |  | 0d |
| 207 | 4.4.3.1 | ROCIADORES TIPO PARANTE DE 1/2" | manual | 1d | 2022-06-03 | 2022-06-03 | 205 |  |
| 208 | 4.4.4 | **SUMINISTRO E INSTALACION DE GABINETES CONTRA INCENDIO** |  | 9d | 2022-06-04 | 2022-06-13 |  | 0d |
| 209 | 4.4.4.1 | GABINETE C. INC. 85X100X20 cm C/MANGUERA POLYESTER 1 1/2" x30m | manual | 9d | 2022-06-04 | 2022-06-13 | 207 |  |
| 210 | 4.4.5 | **VALVULAS DE SISTEMA CONTRA INCENDIO** |  | 4d | 2022-06-14 | 2022-06-17 |  | 0d |
| 211 | 4.4.5.1 | VALVULA DE COMPUERTA DE BRONCE 1" | manual | 1d | 2022-06-14 | 2022-06-14 | 209 |  |
| 212 | 4.4.5.2 | VALVULA COMPUERTA DE BRONCE DE 2 1/2" | manual | 4d | 2022-06-14 | 2022-06-17 | 211SS |  |
| 213 | 4.4.6 | **EQUIPOS** |  | 2d | 2022-06-18 | 2022-06-19 |  | 0d |
| 214 | 4.4.6.1 | ELECTROBOMBA CONTRA INCENDIO, 100 PSI DE HDT Y POTENCIA APROXIMADA DE 30 HP INC. TABLEROS ELECTRICOS | manual | 1d | 2022-06-18 | 2022-06-18 | 212 |  |
| 215 | 4.4.6.2 | ELECTROBOMBA JOCKEY, 120 PSI DE HDT Y POTENCIA APROX. 5HP INC. TABLERO ELECTRICO | manual | 1d | 2022-06-19 | 2022-06-19 | 214 |  |
| 216 | 4.5 | **Sistema de Drenaje Pluvial** |  | 4d | 2022-06-20 | 2022-06-24 |  | 0d |
| 217 | 4.5.1 | **Red de Recoleccion** |  | 4d | 2022-06-20 | 2022-06-24 |  | 0d |
| 218 | 4.5.1.1 | TUBERIA DE PVC-SAP d=1 1/2" PLUVIAL | manual | 4d | 2022-06-20 | 2022-06-23 | 215 |  |
| 219 | 4.5.1.2 | EMPALME A RED EXISTENTE DE AGUA | manual | 1d | 2022-06-24 | 2022-06-24 | 218 |  |
| 220 | 5 | **INSTALACIONES ELECTRICAS** |  | 361d | 2022-02-03 | 2023-02-09 |  | 0d |
| 221 | 5.1 | **MOVIMIENTO DE TIERRAS** |  | 7d | 2022-02-06 | 2022-02-12 |  | 0d |
| 222 | 5.1.1 | EXCAVACION MANUAL EN TERRENO NORMAL PARA INSTALACIONES ELECTRICAS | manual | 3d | 2022-02-06 | 2022-02-08 | 120 |  |
| 223 | 5.1.2 | RELLENO Y COMPACTADO CON MATERIAL PROPIO SELECCIONADO PARA BASE 0.05 cm | manual | 1d | 2022-02-09 | 2022-02-09 | 222 |  |
| 224 | 5.1.3 | RELLENO Y COMPACTADO CON LECHO DE ARENA PARA SUB BASE 0.10cm | manual | 1d | 2022-02-10 | 2022-02-10 | 223 |  |
| 225 | 5.1.4 | RELLENO Y COMPACTADO CON MATERIAL PROPIO SELECCIONADO | manual | 1d | 2022-02-11 | 2022-02-11 | 224 |  |
| 226 | 5.1.5 | ELIMINACION MATERIAL EXCEDENTE | manual | 1d | 2022-02-12 | 2022-02-12 | 225 |  |
| 227 | 5.2 | **CONCRETO SIMPLE** |  | 2d | 2022-02-13 | 2022-02-14 |  | 0d |
| 228 | 5.2.1 | BUZON ELECTRICO ( SEGÚN DISEÑO) | manual | 1d | 2022-02-13 | 2022-02-13 | 226 |  |
| 229 | 5.2.2 | EMPALME SUBTERRANEO EN BUZON ELECTRICO EN CABLE THW DE CALIBRE AWG DE 4mm | manual | 1d | 2022-02-14 | 2022-02-14 | 228 |  |

| ID | WBS | Task | Type | Duration | Start | Finish | Predecessors | Total slack |
| --- | --- | --- | --- | --- | --- | --- | --- | --- |
| 230 | 5.3 | **INSTALACION DE POZO A TIERRA** |  | 17d | 2022-02-15 | 2022-03-03 |  | 0d |
| 231 | 5.3.1 | POZO A TIERRA | manual | 13d | 2022-02-15 | 2022-02-27 | 229 |  |
| 232 | 5.3.2 | CAJA DE REGISTRO PARA POZO A TIERRA CON TAPA DE C°( SEGÚN DISEÑO) | manual | 4d | 2022-02-28 | 2022-03-03 | 231 |  |
| 233 | 5.4 | **ALIMENTADORES** |  | 34d | 2022-02-03 | 2022-03-08 |  | 0d |
| 234 | 5.4.1 | **TABLEROS** |  | 28d | 2022-02-03 | 2022-03-02 |  | 0d |
| 235 | 5.4.1.1 | TABLERO GENERAL TG | manual | 1d | 2022-02-03 | 2022-02-03 | 78SS |  |
| 236 | 5.4.1.2 | TABLERO DISTRIBUCION TD ASC | manual | 1d | 2022-02-04 | 2022-02-04 | 235 |  |
| 237 | 5.4.1.3 | TABLERO GENERAL TD 1 | manual | 1d | 2022-02-05 | 2022-02-05 | 236 |  |
| 238 | 5.4.1.4 | TABLERO GENERAL TD 2 | manual | 1d | 2022-02-06 | 2022-02-06 | 237 |  |
| 239 | 5.4.1.5 | TABLERO GENERAL TD 101 | manual | 1d | 2022-02-07 | 2022-02-07 | 238 |  |
| 240 | 5.4.1.6 | TABLERO GENERAL TD 102 | manual | 1d | 2022-02-08 | 2022-02-08 | 239 |  |
| 241 | 5.4.1.7 | TABLERO GENERAL TD 201 | manual | 2d | 2022-02-09 | 2022-02-10 | 240 |  |
| 242 | 5.4.1.8 | TABLERO GENERAL TD 202 | manual | 1d | 2022-02-11 | 2022-02-11 | 241 |  |
| 243 | 5.4.1.9 | TABLERO GENERAL TD 301 | manual | 1d | 2022-02-12 | 2022-02-12 | 242 |  |
| 244 | 5.4.1.10 | TABLERO GENERAL TD 302 | manual | 1d | 2022-02-13 | 2022-02-13 | 243 |  |
| 245 | 5.4.1.11 | TABLERO GENERAL TD 401 | manual | 1d | 2022-02-14 | 2022-02-14 | 244 |  |
| 246 | 5.4.1.12 | TABLERO GENERAL TD 402 | manual | 1d | 2022-02-15 | 2022-02-15 | 245 |  |
| 247 | 5.4.1.13 | TABLERO GENERAL TD 501 | manual | 1d | 2022-02-16 | 2022-02-16 | 246 |  |
| 248 | 5.4.1.14 | TABLERO GENERAL TD 502 | manual | 2d | 2022-02-17 | 2022-02-18 | 247 |  |
| 249 | 5.4.1.15 | TABLERO GENERAL TD 601 | manual | 1d | 2022-02-19 | 2022-02-19 | 248 |  |
| 250 | 5.4.1.16 | TABLERO GENERAL TD 602 | manual | 1d | 2022-02-20 | 2022-02-20 | 249 |  |
| 251 | 5.4.1.17 | TABLERO GENERAL TD 701 | manual | 1d | 2022-02-21 | 2022-02-21 | 250 |  |
| 252 | 5.4.1.18 | TABLERO GENERAL TD 702 | manual | 1d | 2022-02-22 | 2022-02-22 | 251 |  |
| 253 | 5.4.1.19 | TABLERO GENERAL TD EST 00 | manual | 1d | 2022-02-23 | 2022-02-23 | 252 |  |
| 254 | 5.4.1.20 | TABLERO GENERAL TD EST 10 | manual | 1d | 2022-02-24 | 2022-02-24 | 253 |  |
| 255 | 5.4.1.21 | TABLERO GENERAL TD EST 20 | manual | 2d | 2022-02-25 | 2022-02-26 | 254 |  |
| 256 | 5.4.1.22 | TABLERO GENERAL TD EST 30 | manual | 1d | 2022-02-27 | 2022-02-27 | 255 |  |
| 257 | 5.4.1.23 | TABLERO GENERAL TD EST 40 | manual | 1d | 2022-02-28 | 2022-02-28 | 256 |  |
| 258 | 5.4.1.24 | TABLERO GENERAL TD EST 50 | manual | 1d | 2022-03-01 | 2022-03-01 | 257 |  |
| 259 | 5.4.1.25 | TABLERO GENERAL TD EST 60 | manual | 1d | 2022-03-02 | 2022-03-02 | 258 |  |

| ID | WBS | Task | Type | Duration | Start | Finish | Predecessors | Total slack |
| --- | --- | --- | --- | --- | --- | --- | --- | --- |
| 260 | 5.4.2 | **INTERRUPTOR TERMOMAGNÉTICO** |  | 25d | 2022-02-04 | 2022-02-28 |  | 0d |
| 261 | 5.4.2.1 | INTERRUPTOR TERMOMAGNETICO DE 3x100 A. 220V | manual | 1d | 2022-02-04 | 2022-02-04 | 235 |  |
| 262 | 5.4.2.2 | INTERRUPTOR TERMOMAGNETICO DE 3x160A, 220V | manual | 1d | 2022-02-05 | 2022-02-05 | 261 |  |
| 263 | 5.4.2.3 | INTERRUPTOR TERMOMAGNETICO DE 3x50 A, 220V | manual | 1d | 2022-02-06 | 2022-02-06 | 262 |  |
| 264 | 5.4.2.4 | INTERRUPTOR TERMOMAGNETICO DE 3x40 A, 220V | manual | 1d | 2022-02-07 | 2022-02-07 | 263 |  |
| 265 | 5.4.2.5 | INTERRUPTOR TERMOMAGNETICO DE 3x32A, 220V | manual | 1d | 2022-02-08 | 2022-02-08 | 264 |  |
| 266 | 5.4.2.6 | INTERRUPTOR TERMOMAGNETICO DE 3x25 A, 220V | manual | 2d | 2022-02-09 | 2022-02-10 | 265 |  |
| 267 | 5.4.2.7 | INTERRUPTOR TERMOMAGNETICO DE 2x25 A, 220V | manual | 4d | 2022-02-11 | 2022-02-14 | 266 |  |
| 268 | 5.4.2.8 | INTERRUPTOR TERMOMAGNETICO DE 2x16 A, 220V | manual | 5d | 2022-02-15 | 2022-02-19 | 267 |  |
| 269 | 5.4.2.9 | INTERRUPTOR DIFERENCIAL DE 2x25 A, 220V | manual | 9d | 2022-02-20 | 2022-02-28 | 268 |  |
| 270 | 5.4.3 | **DUCTOS Y TUBERIAS** |  | 18d | 2022-02-04 | 2022-02-21 |  | 0d |
| 271 | 5.4.3.1 | TUBERIA PVC SAP-P Ø80mm | manual | 1d | 2022-02-04 | 2022-02-04 | 235 |  |
| 272 | 5.4.3.2 | TUBERIA PVC SAP-P Ø65mm | manual | 5d | 2022-02-05 | 2022-02-09 | 271 |  |
| 273 | 5.4.3.3 | TUBERIA PVC SAP-P Ø35mm | manual | 10d | 2022-02-10 | 2022-02-19 | 272 |  |
| 274 | 5.4.3.4 | TUBERIA PVC SAP-P Ø25mm | manual | 2d | 2022-02-20 | 2022-02-21 | 273 |  |
| 275 | 5.4.4 | **CONDUCTORES Y/O CABLES** |  | 6d | 2022-03-03 | 2022-03-08 |  | 0d |
| 276 | 5.4.4.1 | TENDIDO DE CABLE N2XOH DE 4x120mm² | manual | 1d | 2022-03-03 | 2022-03-03 | 259 |  |
| 277 | 5.4.4.2 | TENDIDO DE CABLE N2XOH DE 4x70mm²+50mm² | manual | 1d | 2022-03-04 | 2022-03-04 | 276 |  |
| 278 | 5.4.4.3 | TENDIDO DE CABLE N2XOH DE 4x25mm²+16mm² | manual | 2d | 2022-03-05 | 2022-03-06 | 277 |  |
| 279 | 5.4.4.4 | TENDIDO DE CABLE N2XOH DE 4x16mm²+10mm² | manual | 1d | 2022-03-07 | 2022-03-07 | 278 |  |
| 280 | 5.4.4.5 | TENDIDO DE CABLE CU DESNUDO 1X50mm² | manual | 1d | 2022-03-08 | 2022-03-08 | 279 |  |
| 281 | 5.5 | **ALUMBRADO - TOMACORRIENTES** |  | 361d | 2022-02-03 | 2023-02-09 |  | 0d |
| 282 | 5.5.1 | **DUCTOS Y TUBERIAS** |  | 361d | 2022-02-03 | 2023-02-09 |  | 0d |
| 283 | 5.5.1.1 | TUBERIA PVC SAP-P Ø 20mm | manual | 361d | 2022-02-03 | 2023-02-09 | 235SS |  |

| ID | WBS | Task | Type | Duration | Start | Finish | Predecessors | Total slack |
| --- | --- | --- | --- | --- | --- | --- | --- | --- |
| 284 | 5.5.2 | **CONDUCTORES Y CABLES** |  | 18d | 2022-03-09 | 2022-03-26 |  | 0d |
| 285 | 5.5.2.1 | TENDIDO DE CABLE LSOHX-90 DE 2x2.5mm² | manual | 12d | 2022-03-09 | 2022-03-20 | 280 |  |
| 286 | 5.5.2.2 | TENDIDO DE CABLE LSOHX-90 DE 2x4mm² + 4mm²(T) | manual | 6d | 2022-03-21 | 2022-03-26 | 285 |  |
| 287 | 5.5.3 | **SALIDA PARA CENTRO DE LUZ** |  | 232d | 2022-02-03 | 2022-09-30 |  | 0d |
| 288 | 5.5.3.1 | SALIDA A TECHO (CENTRO DE LUZ) | manual | 133d | 2022-02-03 | 2022-06-18 | 283SS |  |
| 289 | 5.5.3.2 | SALIDA PARA INTERRUPTOR SIMPLE, INCLUYE INSTALACION DE INTERRUPTOR | manual | 5d | 2022-06-19 | 2022-06-23 | 288 |  |
| 290 | 5.5.3.3 | SALIDA PARA INTERRUPTOR DOBLE, INCLUYE INSTALACION DE INTERRUPTOR | manual | 2d | 2022-06-24 | 2022-06-25 | 289 |  |
| 291 | 5.5.3.4 | SALIDA PARA TOMACORRIENTE DOBLE CON LINEA A TIERRA 16A (sin interrumpido) | manual | 24d | 2022-06-26 | 2022-07-20 | 290 |  |
| 292 | 5.5.3.5 | SALIDA PARA TOMACORRIENTE DOBLE CON LINEA A TIERRA 16A (en piso) (sin interrumpido) | manual | 5d | 2022-07-21 | 2022-07-25 | 291 |  |
| 293 | 5.5.3.6 | SALIDA PARA TOMACORRIENTE DOBLE CON LINEA A TIERRA 16A | manual | 53d | 2022-07-26 | 2022-09-19 | 292 |  |
| 294 | 5.5.3.7 | SALIDA PARA TOMACORRIENTE DOBLE CON LINEA A TIERRA 16A (1.2m 2.4m) | manual | 1d | 2022-09-20 | 2022-09-20 | 293 |  |
| 295 | 5.5.3.8 | SALIDA PARA TOMACORRIENTE DOBLE CON LINEA A TIERRA 16A (en piso) | manual | 3d | 2022-09-21 | 2022-09-23 | 294 |  |
| 296 | 5.5.3.9 | SALIDA DE LUZ DE EMERGENCIA | manual | 7d | 2022-09-24 | 2022-09-30 | 295 |  |
| 297 | 5.6 | **ARTEFACTOS DE ILUMINACION** |  | 104d | 2022-10-01 | 2023-01-15 |  | 0d |
| 298 | 5.6.1 | LUMINARIA PARA SOBREPONER TIPO PANEL LED 40W DE 120X30cm 6500°K 50000 hrs | manual | 30d | 2022-10-01 | 2022-10-30 | 296 |  |
| 299 | 5.6.2 | LUMINARIA PARA SOBREPONER TIPO PANEL LED 40W DE 60X60cm 6500°K 50000 hrs | manual | 30d | 2022-10-31 | 2022-12-01 | 298 |  |
| 300 | 5.6.3 | LUMINARIA PARA SOBREPONER TIPO PANEL LED 24W CIRCULAR 6500°K 50000 hrs | manual | 36d | 2022-12-03 | 2023-01-08 | 299 |  |
| 301 | 5.6.4 | LUMINARIA PARA SOBREPONER TIPO PANEL LED 12W CIRCULAR 6500°K 50000 hrs | manual | 2d | 2023-01-09 | 2023-01-10 | 300 |  |
| 302 | 5.6.5 | ARTEFACTO DE ILUMINACION DE EMERGENCIA CON DOS LAMPARAS DE 20W, CON 2HORAS DE AUTONOMIA | manual | 5d | 2023-01-11 | 2023-01-15 | 301 |  |
| 303 | 5.7 | **SISTEMA DE MEDIA TENSION Y RESPALDO** |  | 2d | 2022-03-27 | 2022-03-28 |  | 0d |
| 304 | 5.7.1 | SISTEMA DE RESPALDO ININTERRUMPIDO DE 50 KVA TIPO REDUNDANTE | manual | 1d | 2022-03-27 | 2022-03-27 | 286 |  |
| 305 | 5.7.2 | SISTEMA DE RESPALDO GRUPO ELECTROGENO DE 100KVA | manual | 1d | 2022-03-28 | 2022-03-28 | 304 |  |
| 306 | 6 | **SOLUCIONES DE TECNOLOGÍA DE INFORMACIÓN Y COMUNICACIONES (TIC)** |  | 373d | 2022-02-03 | 2023-02-21 |  | 0d |
| 307 | 6.1 | **SISTEMA DE TELEFONÍA.** |  | 37d | 2023-01-16 | 2023-02-21 |  | 0d |
| 308 | 6.1.1 | CENTRAL DE TELEFONIA IP | manual | 1d | 2023-01-16 | 2023-01-16 | 302 |  |
| 309 | 6.1.2 | OPERADORA TELEFONICA | manual | 3d | 2023-01-17 | 2023-01-19 | 308 |  |
| 310 | 6.1.3 | TELÉFONO IP DE MESA USO GERENCIAL | manual | 23d | 2023-01-20 | 2023-02-11 | 309 |  |
| 311 | 6.1.4 | TELÉFONO IP DE MESA USO GENERAL | manual | 9d | 2023-02-12 | 2023-02-20 | 310 |  |
| 312 | 6.1.5 | SERVICIO DE INSTALACIÓN Y PUESTA EN OPERACIÓN DE LA SOLUCIÓN DE TELEFONÍA IP | manual | 1d | 2023-02-21 | 2023-02-21 | 311 |  |

| ID | WBS | Task | Type | Duration | Start | Finish | Predecessors | Total slack |
| --- | --- | --- | --- | --- | --- | --- | --- | --- |
| 313 | 6.2 | **SISTEMA DE SONIDO AMBIENTAL Y PERIFONEO.** |  | 107d | 2022-03-29 | 2022-07-18 |  | 0d |
| 314 | 6.2.1 | **CABLES EN TUBERIAS** |  | 22d | 2022-03-29 | 2022-04-21 |  | 0d |
| 315 | 6.2.1.1 | CABLE F/UTP CAT 6A | manual | 2d | 2022-03-29 | 2022-03-30 | 305 |  |
| 316 | 6.2.1.2 | CABLE DE AUDIO STEREO 2X16 AWG | manual | 20d | 2022-03-31 | 2022-04-21 | 315 |  |
| 317 | 6.2.2 | **CANALETAS, CONDUCTOS Y/O TUBERIAS** |  | 23d | 2022-04-22 | 2022-05-14 |  | 0d |
| 318 | 6.2.2.1 | TUBO PVC-SAP 25 mm Ø (1") P/INST. ELECTRICAS | manual | 2d | 2022-04-22 | 2022-04-23 | 316 |  |
| 319 | 6.2.2.2 | CURVA PVC-SAP 25 mm Ø (1") P/INST. ELECTRICAS | manual | 2d | 2022-04-24 | 2022-04-25 | 318 |  |
| 320 | 6.2.2.3 | ADAPTADOR TUBO CAJA PVC-SAP 25 mm Ø (1") P/INST. ELECTRICAS | manual | 2d | 2022-04-26 | 2022-04-27 | 319 |  |
| 321 | 6.2.2.4 | TUBO CONDUIT EMT Ø 25mm. (1") | manual | 6d | 2022-04-28 | 2022-05-03 | 320 |  |
| 322 | 6.2.2.5 | CURVA 90° CONDUIT EMT Ø 25MM. (1") | manual | 2d | 2022-05-04 | 2022-05-05 | 321 |  |
| 323 | 6.2.2.6 | CONECTOR CONDUIT EMT Ø 25mm. (1") | manual | 9d | 2022-05-06 | 2022-05-14 | 322 |  |
| 324 | 6.2.3 | **CAJA DE PASE PARA TELECOMUNICACIONES** |  | 6d | 2022-05-15 | 2022-05-20 |  | 0d |
| 325 | 6.2.3.1 | CAJA DE PASE CUADRADA DE F°G° CON TAPA BISELADA DE 150x150x100 mm. | manual | 1d | 2022-05-15 | 2022-05-15 | 323 |  |
| 326 | 6.2.3.2 | ACCESORIO SALIDA BANDEJA | manual | 5d | 2022-05-16 | 2022-05-20 | 325 |  |
| 327 | 6.2.4 | **SALIDA DE SISTEMA DE EVACUACIÓN** |  | 8d | 2022-05-21 | 2022-05-28 |  | 0d |
| 328 | 6.2.4.1 | SALIDA ESTACION PAVA | manual | 2d | 2022-05-21 | 2022-05-22 | 326 |  |
| 329 | 6.2.4.2 | SALIDA PARA AMPLIFICADOR | manual | 1d | 2022-05-23 | 2022-05-23 | 328 |  |
| 330 | 6.2.4.3 | SALIDA PARA PARLANTE ADOSADO | manual | 5d | 2022-05-24 | 2022-05-28 | 329 |  |
| 331 | 6.2.5 | **ACCESORIOS DE SALIDA DE SISTEMA DE EVACUACION** |  | 1d | 2022-05-29 | 2022-05-29 |  | 0d |
| 332 | 6.2.5.1 | PLACA SALIDA SIMPLE RJ45 PARA ESTACIÓN | manual | 1d | 2022-05-29 | 2022-05-29 | 330 |  |
| 333 | 6.2.6 | **APARATOS/DISPOSITIVOS DE SISTEMA DE NOTIFICACIÓN DE EMERGENCIAS Y AUDIO EVACUACIÓN** |  | 6d | 2022-05-30 | 2022-06-04 |  | 0d |
| 334 | 6.2.6.1 | UNIDAD DE CONTROL MAESTRO | manual | 1d | 2022-05-30 | 2022-05-30 | 332 |  |
| 335 | 6.2.6.2 | ESTACIÓN DE LLAMADA | manual | 1d | 2022-05-31 | 2022-05-31 | 334 |  |
| 336 | 6.2.6.3 | AMPLIFICADOR DE 500W CLASE D | manual | 2d | 2022-06-01 | 2022-06-02 | 335 |  |
| 337 | 6.2.6.4 | PARLANTES EN TECHO | manual | 2d | 2022-06-03 | 2022-06-04 | 336 |  |

| ID | WBS | Task | Type | Duration | Start | Finish | Predecessors | Total slack |
| --- | --- | --- | --- | --- | --- | --- | --- | --- |
| 338 | 6.2.7 | **SISTEMA DE SONIDO PARA AUDITORIO** |  | 20d | 2022-06-05 | 2022-06-26 |  | 0d |
| 339 | 6.2.7.1 | MIXER 16 MONO + 3 ESTEREO C/EFECTOS | manual | 1d | 2022-06-05 | 2022-06-05 | 337 |  |
| 340 | 6.2.7.2 | MEZCLADOR REPRODUCTOR AUDIO DIGITAL USB/SD Y ENLACE BLUETOOTH DISPOSITIVOS MÓVILES | manual | 1d | 2022-06-06 | 2022-06-06 | 339 |  |
| 341 | 6.2.7.3 | TURBOSOUND ARRAY PORTÁTIL DE 2 VÍAS | manual | 1d | 2022-06-07 | 2022-06-07 | 340 |  |
| 342 | 6.2.7.4 | DOBLE MICRO INALÁMBRICO DE MANO EN UHF CON SISTEMA DE ANTENA DIVERSITY | manual | 1d | 2022-06-08 | 2022-06-08 | 341 |  |
| 343 | 6.2.7.5 | MICRÓFONO CONDENSADOR CON FLEXO CON BASE DE SOBREMESA Y SWITCH DE ENCENDIDO | manual | 4d | 2022-06-09 | 2022-06-12 | 342 |  |
| 344 | 6.2.7.6 | MUEBLE TIPO RACK FABRICADO EN MELAMINA, PUERTA TRASERA Y DELANTERA CON CIERRE Y CRISTAL | manual | 1d | 2022-06-13 | 2022-06-13 | 343 |  |
| 345 | 6.2.7.7 | PARANTE DE MICRÓFONO STAND ATRIL PEDESTAL MICRO | manual | 2d | 2022-06-14 | 2022-06-15 | 344 |  |
| 346 | 6.2.7.8 | AMPLIFICADOR PARA LINEA 100V/180W 240W MAX. CON REPRODUCTOR USB -SD -FM. | manual | 2d | 2022-06-16 | 2022-06-17 | 345 |  |
| 347 | 6.2.7.9 | PARLANTE DE TECHO PARA EMPOTRAR 6 1/2'' DOBLE CONO TRANSF. LINEA 100V/6W -24W MAX. | manual | 8d | 2022-06-18 | 2022-06-26 | 346 |  |
| 348 | 6.2.8 | **SERVICIO PARA SISTEMA DE NOTIFICACIÓN DE EMERGENCIAS Y AUDIO EVACUACIÓN** |  | 105d | 2022-03-31 | 2022-07-18 |  | 0d |
| 349 | 6.2.8.1 | SERVICIO DE CABLEADO, INSTALACIÓN, INGENIERÍA Y PROGRAMACIÓN DE COMPONENTES DE CAMPO, INCLUYE MATERIALES DE INSTALACIÓN, PRUEBAS Y PUESTA EN MARCHA DEL SISTEMA PAVA | manual | 105d | 2022-03-31 | 2022-07-18 | 315 |  |
| 350 | 6.3 | **SISTEMA DE CONTROL ACCESOS Y SEGURIDAD.** |  | 85d | 2022-03-31 | 2022-06-27 |  | 0d |
| 351 | 6.3.1 | **CABLES EN TUBERIAS** |  | 1d | 2022-06-27 | 2022-06-27 |  | 0d |
| 352 | 6.3.1.1 | CABLE F/UTP CAT 6A | manual | 1d | 2022-06-27 | 2022-06-27 | 347 |  |
| 353 | 6.3.2 | **CANALETAS, CONDUCTOS Y/O TUBERIAS** |  | 9d | 2022-03-31 | 2022-04-08 |  | 0d |
| 354 | 6.3.2.1 | TUBO PVC-SAP 25 mm Ø (1") P/INST. ELECTRICAS | manual | 2d | 2022-03-31 | 2022-04-01 | 349SS |  |
| 355 | 6.3.2.2 | CURVA PVC-SAP 25 mm Ø (1") P/INST. ELECTRICAS | manual | 2d | 2022-04-02 | 2022-04-03 | 354 |  |
| 356 | 6.3.2.3 | ADAPTADOR TUBO CAJA PVC-SAP 25 mm Ø (1") P/INST. ELECTRICAS | manual | 1d | 2022-04-04 | 2022-04-04 | 355 |  |
| 357 | 6.3.2.4 | TUBO CONDUIT EMT Ø 25mm. (1") | manual | 1d | 2022-04-05 | 2022-04-05 | 356 |  |
| 358 | 6.3.2.5 | CURVA 90° CONDUIT EMT Ø 25MM. (1") | manual | 1d | 2022-04-06 | 2022-04-06 | 357 |  |
| 359 | 6.3.2.6 | CONECTOR CONDUIT EMT Ø 25mm. (1") | manual | 2d | 2022-04-07 | 2022-04-08 | 358 |  |
| 360 | 6.3.3 | **CAJA DE PASE PARA TELECOMUNICACIONES** |  | 4d | 2022-03-31 | 2022-04-03 |  | 0d |
| 361 | 6.3.3.1 | CAJA DE PASE CUADRADA DE F°G° CON TAPA BISELADA DE 150x150x100 mm. | manual | 2d | 2022-03-31 | 2022-04-01 | 354SS |  |
| 362 | 6.3.3.2 | ACCESORIO SALIDA BANDEJA | manual | 2d | 2022-04-02 | 2022-04-03 | 361 |  |

| ID | WBS | Task | Type | Duration | Start | Finish | Predecessors | Total slack |
| --- | --- | --- | --- | --- | --- | --- | --- | --- |
| 363 | 6.3.4 | **SALIDAS PARA CONTROL DE ACCESO Y SEGURIDAD** |  | 5d | 2022-04-04 | 2022-04-08 |  | 0d |
| 364 | 6.3.4.1 | SALIDA PARA BOTON DE SALIDA | manual | 1d | 2022-04-04 | 2022-04-04 | 362 |  |
| 365 | 6.3.4.2 | SALIDA PARA CONTROL DE PRESENCIA | manual | 1d | 2022-04-05 | 2022-04-05 | 364 |  |
| 366 | 6.3.4.3 | SALIDA PARA CONTROL DE ACCESO | manual | 1d | 2022-04-06 | 2022-04-06 | 365 |  |
| 367 | 6.3.4.4 | SALIDA PARA CERRADURA ELECTRÓNICA | manual | 2d | 2022-04-07 | 2022-04-08 | 366 |  |
| 368 | 6.3.5 | **PLACAS Y ACCESORIOS PARA SALIDAS DE CONTROL DE ACCESO Y SEGURIDAD** |  | 1d | 2022-04-09 | 2022-04-09 |  | 0d |
| 369 | 6.3.5.1 | CONECTOR RJ45 DE CAMPO CAT.6A | manual | 1d | 2022-04-09 | 2022-04-09 | 367 |  |
| 370 | 6.3.6 | **APARATOS/DISPOSITIVOS DE SISTEMA DE CONTROL DE ACCESO Y SEGURIDAD** |  | 7d | 2022-04-10 | 2022-04-18 |  | 0d |
| 371 | 6.3.6.1 | CONTROL DE ASISTENCIA CON LECTOR DE HUELLA DIGITAL + PIN + TARJETA DE | manual | 1d | 2022-04-10 | 2022-04-10 | 369 |  |
| 372 | 6.3.6.2 | LECTOR DE HUELLAS DIGITALES Y RFID | manual | 3d | 2022-04-11 | 2022-04-13 | 371 |  |
| 373 | 6.3.6.3 | CERRADURA ELECTROMAGNETICA DE 300 LB | manual | 2d | 2022-04-14 | 2022-04-15 | 372 |  |
| 374 | 6.3.6.4 | BOTON DE SALIDA | manual | 2d | 2022-04-16 | 2022-04-17 | 373 |  |
| 375 | 6.3.6.5 | PANEL IP PARA CONTROL DE ACCESO | manual | 1d | 2022-04-18 | 2022-04-18 | 374 |  |
| 376 | 6.3.7 | **PATCH PANEL** |  | 2d | 2022-04-19 | 2022-04-20 |  | 0d |
| 377 | 6.3.7.1 | JACK CAT 6A | manual | 2d | 2022-04-19 | 2022-04-20 | 375 |  |
| 378 | 6.3.8 | **SERVICIO PARA SISTEMA DE CONTROL DE ACCESO Y SEGURIDAD** |  | 2d | 2022-04-21 | 2022-04-22 |  | 0d |
| 379 | 6.3.8.1 | SERVICIO DE INSTALACION Y PUESTA EN MARCHA DEL SISTEMA DE CONTROL DE ACCESO Y SEGURIDAD | manual | 2d | 2022-04-21 | 2022-04-22 | 377 |  |
| 380 | 6.4 | **SISTEMA DETECCIÓN Y ALARMA DE INCENDIOS** |  | 217d | 2022-04-23 | 2022-12-03 |  | 0d |
| 381 | 6.4.1 | **CABLES EN TUBERIAS** |  | 21d | 2022-04-23 | 2022-05-13 |  | 0d |
| 382 | 6.4.1.1 | CABLE FPLR 2X16, LSZH | manual | 15d | 2022-04-23 | 2022-05-07 | 379 |  |
| 383 | 6.4.1.2 | CABLE FPLR 2X14, LSZH | manual | 6d | 2022-05-08 | 2022-05-13 | 382 |  |
| 384 | 6.4.2 | **CANALETAS, CONDUCTOS Y/O TUBERIAS** |  | 29d | 2022-05-14 | 2022-06-12 |  | 0d |
| 385 | 6.4.2.1 | TUBO PVC-SAP 25 mm Ø (1") P/INST. ELECTRICAS | manual | 4d | 2022-05-14 | 2022-05-17 | 383 |  |
| 386 | 6.4.2.2 | CURVA PVC-SAP 25 mm Ø (1") P/INST. ELECTRICAS | manual | 2d | 2022-05-18 | 2022-05-19 | 385 |  |
| 387 | 6.4.2.3 | ADAPTADOR TUBO CAJA PVC-SAP 25 mm Ø (1") P/INST. ELECTRICAS | manual | 3d | 2022-05-20 | 2022-05-22 | 386 |  |
| 388 | 6.4.2.4 | TUBO PVC-SAP 50 mm Ø (2") P/INST. ELECTRICAS | manual | 1d | 2022-05-23 | 2022-05-23 | 387 |  |
| 389 | 6.4.2.5 | ADAPTADOR TUBO CAJA PVC-SAP 50 mm Ø (2") P/INST. ELECTRICAS | manual | 2d | 2022-05-24 | 2022-05-25 | 388 |  |
| 390 | 6.4.2.6 | TUBO CONDUIT EMT Ø 25mm. (1") | manual | 29d | 2022-05-14 | 2022-06-12 | 385SS |  |
| 391 | 6.4.2.7 | CURVA 90° CONDUIT EMT Ø 25MM. (1") | manual | 7d | 2022-05-16 | 2022-05-22 | 390SS |  |
| 392 | 6.4.2.8 | CONECTOR CONDUIT EMT Ø 25mm. (1") | manual | 18d | 2022-05-16 | 2022-06-02 | 391SS |  |

| ID | WBS | Task | Type | Duration | Start | Finish | Predecessors | Total slack |
| --- | --- | --- | --- | --- | --- | --- | --- | --- |
| 393 | 6.4.3 | **CAJA DE PASE PARA TELECOMUNICACIONES** |  | 12d | 2022-06-03 | 2022-06-15 |  | 0d |
| 394 | 6.4.3.1 | CAJA DE PASE CUADRADA DE F°G° CON TAPA BISELADA DE 150x150x100 mm. | manual | 2d | 2022-06-03 | 2022-06-04 | 392 |  |
| 395 | 6.4.3.2 | CAJA DE PASE CUADRADA DE F°G° CON TAPA BISELADA DE 200x200x100 mm. | manual | 1d | 2022-06-05 | 2022-06-05 | 394 |  |
| 396 | 6.4.3.3 | ACCESORIO SALIDA BANDEJA | manual | 9d | 2022-06-06 | 2022-06-15 | 395 |  |
| 397 | 6.4.4 | **SALIDA DE TELECOMUNICACIONES** |  | 16d | 2022-06-16 | 2022-07-03 |  | 0d |
| 398 | 6.4.4.1 | SALIDA PARA ESTACION MANUAL/BOCINA ESTROBOSCOPICA | manual | 3d | 2022-06-16 | 2022-06-18 | 396 |  |
| 399 | 6.4.4.2 | SALIDA PARA MODULO DE MONITOREO/CONTROL/AISLAMIENTO ADOSAR EMT | manual | 1d | 2022-06-19 | 2022-06-19 | 398 |  |
| 400 | 6.4.4.3 | SALIDA PARA DETECTOR DE HUMO/TEMPERATURA ADOSAR EMT | manual | 9d | 2022-06-20 | 2022-06-29 | 399 |  |
| 401 | 6.4.4.4 | SALIDA PARA DETECTOR DE HUMO/TEMPERATURA | manual | 2d | 2022-06-30 | 2022-07-01 | 400 |  |
| 402 | 6.4.4.5 | SALIDA PARA DETECTOR DE ANIEGO | manual | 2d | 2022-07-02 | 2022-07-03 | 401 |  |
| 403 | 6.4.5 | **APARATOS/DISPOSITIVOS DE SISTEMA DE DETECCIÓN Y ALARME DE INCENDIOS** |  | 47d | 2022-07-04 | 2022-08-21 |  | 0d |
| 404 | 6.4.5.1 | **PANEL** |  | 1d | 2022-07-04 | 2022-07-04 |  | 0d |
| 405 | 6.4.5.1.1 | PANEL DE INCENDIO DIRECCIONABLE EN ESPAÑOL DE UN LAZO PARA 159 DETECTORES / 159 MÓDULOS. CERTIFICADO UL, FM. ALIMENTACIÓN 220VAC. | manual | 1d | 2022-07-04 | 2022-07-04 | 402 |  |
| 406 | 6.4.5.2 | **FUENTES DE ALIMENTACION DE CORNETAS, LUCES ESTROBOSCOPICAS Y CAMPANAS** |  | 1d | 2022-07-05 | 2022-07-05 |  | 0d |
| 407 | 6.4.5.2.1 | PACK DE 2 BATERÍAS 12V,26AH. | manual | 1d | 2022-07-05 | 2022-07-05 | 405 |  |
| 408 | 6.4.5.3 | **COMPONENTES DE CAMPO** |  | 45d | 2022-07-06 | 2022-08-21 |  | 0d |
| 409 | 6.4.5.3.1 | DETECTOR DE HUMO FOTOELÉCTRICO DIRECCIONABLE, INTELIGENTE, CERTIFICACIÓN UL, FM, COLOR BLANCO. | manual | 1d | 2022-07-06 | 2022-07-06 | 407 |  |
| 410 | 6.4.5.3.2 | DETECTOR DE HUMO/TEMPERATURA DIRECCIONABLE, CERTIFICACIÓN UL, FM, COLOR BLANCO. | manual | 12d | 2022-07-07 | 2022-07-18 | 409 |  |
| 411 | 6.4.5.3.3 | DETECTOR DE ANIEGO | manual | 9d | 2022-07-19 | 2022-07-27 | 410 |  |
| 412 | 6.4.5.3.4 | ESTACIÓN MANUAL DIRECCIONABLE DE DOBLE ACCIÓN. CERTIFICACIÓN UL, FM. EN ESPAÑOL. | manual | 23d | 2022-07-28 | 2022-08-20 | 411 |  |
| 413 | 6.4.5.3.5 | SIRENA CON LUZ ESTROBOSCÓPICA DE PARED, COLOR ROJO. EN ESPAÑOL. | manual | 22d | 2022-07-07 | 2022-07-30 | 409 |  |
| 414 | 6.4.5.3.6 | MÓDULO DE MONITOREO DIRECCIONABLE. CERTIFICACIÓN UL, FM. | manual | 1d | 2022-07-31 | 2022-07-31 | 413 |  |
| 415 | 6.4.5.3.7 | MÓDULO DE CONTROL DIRECCIONABLE. CERTIFICACIÓN UL, FM. | manual | 1d | 2022-08-01 | 2022-08-01 | 414 |  |
| 416 | 6.4.5.3.8 | MÓDULO DE AISLAMIENTO. CERTIFICACIÓN UL, FM. | manual | 1d | 2022-08-21 | 2022-08-21 | 415, 412 |  |

| ID | WBS | Task | Type | Duration | Start | Finish | Predecessors | Total slack |
| --- | --- | --- | --- | --- | --- | --- | --- | --- |
| 417 | 6.4.6 | **SERVICIO PARA SISTEMA DE DETECCIÓN Y ALARMA DE INCENDIOS** |  | 202d | 2022-05-08 | 2022-12-03 |  | 0d |
| 418 | 6.4.6.1 | SERVICIO DE CABLEADO, INSTALACIÓN, INGENIERÍA Y PROGRAMACIÓN DECOMPONENTES DE CAMPO EN PANEL, INCLUYE MATERIALES DE INSTALACIÓN, PRUEBAS YPUESTA EN MARCHA DEL SISTEMA | manual | 202d | 2022-05-08 | 2022-12-03 | 382 |  |
| 419 | 6.5 | **SISTEMA DE PROCESAMIENTO Y ALMACENAMIENTO CENTRALIZADO** |  | 3d | 2022-12-05 | 2022-12-07 |  | 0d |
| 420 | 6.5.1 | SERVIDOR HIPERCONVERGENTE | manual | 1d | 2022-12-05 | 2022-12-05 | 418 |  |
| 421 | 6.5.2 | SERV INSTALACIÓN, CONFIG., PUESTA EN MARCHA Y CAPACITACIÓN DEL SERVIDOR DE APLICACIONES | manual | 2d | 2022-12-06 | 2022-12-07 | 420 |  |
| 422 | 6.6 | **SISTEMA DE CONECTIVIDAD Y SEGURIDAD INFORMÁTICA** |  | 48d | 2022-12-08 | 2023-01-25 |  | 0d |
| 423 | 6.6.1 | EQUIPO DE SEGURIDAD PERIMETRAL (FIREWALL) | manual | 1d | 2022-12-08 | 2022-12-08 | 421 |  |
| 424 | 6.6.2 | SWITCH TIPO CORE 24 PUERTOS DE FIBRA 10GBPS | manual | 2d | 2022-12-09 | 2022-12-10 | 423 |  |
| 425 | 6.6.3 | SWITCH TIPO BORDE 48 PUERTOS POE+ | manual | 12d | 2022-12-11 | 2022-12-22 | 424 |  |
| 426 | 6.6.4 | PUNTO DE ACCESO INALAMBRICO | manual | 4d | 2022-12-23 | 2022-12-26 | 425 |  |
| 427 | 6.6.5 | TRANSCEIVER 10 GB MULTIMODO | manual | 48d | 2022-12-09 | 2023-01-25 | 423 |  |
| 428 | 6.6.6 | TRANSCEIVER 1 GB COBRE | manual | 24d | 2022-12-11 | 2023-01-03 | 424 |  |
| 429 | 6.6.7 | SERVICIO INSTALACIÓN SISTEMA DE CONECTIVIDAD Y SEGURIDAD INFORMÁTICA | manual | 19d | 2022-12-09 | 2022-12-27 | 423 |  |
| 430 | 6.7 | **ACOMETIDA DE LOS SERVICIOS DE TELECOMUNICACIONES.** |  | 4d | 2022-12-28 | 2022-12-31 |  | 0d |
| 431 | 6.7.1 | **TRONCAL DE DATOS** |  | 4d | 2022-12-28 | 2022-12-31 |  | 0d |
| 432 | 6.7.1.1 | **CABLEADO ESTRUCTURADO TRONCAL DE DATOS** |  | 4d | 2022-12-28 | 2022-12-31 |  | 0d |
| 433 | 6.7.1.1.1 | **CANALETAS, CONDUCTOS Y/O TUBERIAS** |  | 3d | 2022-12-28 | 2022-12-30 |  | 0d |
| 434 | 6.7.1.1.1.1 | TUBO CONDUIT EMT Ø 50mm. (2") | manual | 1d | 2022-12-28 | 2022-12-28 | 429 |  |
| 435 | 6.7.1.1.1.2 | CONECTOR CONDUIT EMT Ø 50mm. (2") | manual | 2d | 2022-12-29 | 2022-12-30 | 434 |  |
| 436 | 6.7.1.1.2 | **CAJA DE PASE PARA TELECOMUNICACIONES** |  | 1d | 2022-12-31 | 2022-12-31 |  | 0d |
| 437 | 6.7.1.1.2.1 | CAJA DE PASE CUADRADA DE F°G° CON TAPA BISELADA DE 200x200x100 mm. ADOSAR EMT | manual | 1d | 2022-12-31 | 2022-12-31 | 435 |  |
| 438 | 6.8 | **LICENCIAS DE SOFTWARE** |  | 14d | 2023-01-01 | 2023-01-14 |  | 0d |
| 439 | 6.8.1 | SOFTWARE DE MONITOREO DE LA RED | manual | 2d | 2023-01-01 | 2023-01-02 | 437 |  |
| 440 | 6.8.2 | SOFTWARE DE VIRTUALIZACION | manual | 2d | 2023-01-03 | 2023-01-04 | 439 |  |
| 441 | 6.8.3 | SOFTWARE DE ADMINISTRACIÓN DE VIRTUALIZACIÓN | manual | 1d | 2023-01-05 | 2023-01-05 | 440 |  |
| 442 | 6.8.4 | SISTEMA OPERATIVO WINDOWS SERVER 2022 STANDARD | manual | 6d | 2023-01-06 | 2023-01-11 | 441 |  |
| 443 | 6.8.5 | LICENCIAS DE ACCESO CLIENTE (CAL) PARA SERVIDOR 10 USUARIOS | manual | 1d | 2023-01-12 | 2023-01-12 | 442 |  |
| 444 | 6.8.6 | SOFTWARE DE VIDEO CONFERENCIA | manual | 2d | 2023-01-13 | 2023-01-14 | 443 |  |

| ID | WBS | Task | Type | Duration | Start | Finish | Predecessors | Total slack |
| --- | --- | --- | --- | --- | --- | --- | --- | --- |
| 445 | 6.9 | **SISTEMA DE CABLEADO ESTRUCTURADO Y CENTRO DE DATOS** |  | 369d | 2022-02-03 | 2023-02-17 |  | 0d |
| 446 | 6.9.1 | **CABLES EN TUBERIAS** |  | 273d | 2022-05-08 | 2023-02-13 |  | 0d |
| 447 | 6.9.1.1 | CABLE FO INDOOR / OUTDOOR (TIGHT BUFFER), OM4 X 06F, LSZH | manual | 12d | 2022-05-08 | 2022-05-19 | 418SS |  |
| 448 | 6.9.1.2 | CABLE F/UTP CAT 6A | manual | 261d | 2022-05-20 | 2023-02-13 | 447 |  |
| 449 | 6.9.2 | **CANALETAS, CONDUCTOS Y/O TUBERIAS** |  | 30d | 2022-05-20 | 2022-06-19 |  | 0d |
| 450 | 6.9.2.1 | TUBO PVC-SAP 25 mm Ø (1") P/INST. ELECTRICAS | manual | 18d | 2022-05-20 | 2022-06-06 | 448SS |  |
| 451 | 6.9.2.2 | TUBO PVC-SAP 50 mm Ø (2") P/INST. ELECTRICAS | manual | 2d | 2022-06-07 | 2022-06-08 | 450 |  |
| 452 | 6.9.2.3 | CURVA PVC-SAP 25 mm Ø (1") P/INST. ELECTRICAS | manual | 4d | 2022-06-09 | 2022-06-12 | 451 |  |
| 453 | 6.9.2.4 | ADAPTADOR TUBO CAJA PVC-SAP 25 mm Ø (1") P/INST. ELECTRICAS | manual | 6d | 2022-06-13 | 2022-06-18 | 452 |  |
| 454 | 6.9.2.5 | ADAPTADOR TUBO CAJA PVC-SAP 50 mm Ø (2") P/INST. ELECTRICAS | manual | 1d | 2022-06-19 | 2022-06-19 | 453 |  |
| 455 | 6.9.2.6 | TUBO CONDUIT EMT Ø 25mm. (1") | manual | 5d | 2022-05-20 | 2022-05-24 | 450SS |  |
| 456 | 6.9.2.7 | TUBO CONDUIT EMT Ø 50mm. (2") | manual | 7d | 2022-05-25 | 2022-05-31 | 455 |  |
| 457 | 6.9.2.8 | CURVA 90° CONDUIT EMT Ø 25MM. (1") | manual | 3d | 2022-06-01 | 2022-06-03 | 456 |  |
| 458 | 6.9.2.9 | CURVA 90° CONDUIT EMT Ø 50MM. (2") | manual | 1d | 2022-06-04 | 2022-06-04 | 457 |  |
| 459 | 6.9.2.10 | CONECTOR CONDUIT EMT Ø 25mm. (1") | manual | 4d | 2022-06-05 | 2022-06-09 | 458 |  |
| 460 | 6.9.2.11 | CONECTOR CONDUIT EMT Ø 50mm. (2") | manual | 5d | 2022-06-10 | 2022-06-14 | 459 |  |
| 461 | 6.9.3 | **CANALETAS, CONDUCTOS Y/O TUBERIAS - BANDEJA PORTA CABLES** |  | 44d | 2022-06-15 | 2022-08-01 |  | 0d |
| 462 | 6.9.3.1 | BANDEJA/REJILLA 100 MM ALTO X 300 MM ANCHO X 3 METROS DE ANCHO TERMINADO ELECTRO ZINC | manual | 4d | 2022-06-15 | 2022-06-18 | 460 |  |
| 463 | 6.9.3.2 | SOPORTE BANDEJA/REJILLA 100 MM ALTO X 300 MM ANCHO | manual | 1d | 2022-06-19 | 2022-06-19 | 462 |  |
| 464 | 6.9.3.3 | ACCESORIOS PARA CURVAS Y DERIVACIONES DE BANDEJA/REJILLA 100 MM ALTO X 300 MM ANCHO X 3 METROS DE ANCHO TERMINADO ELECTRO ZINC | manual | 2d | 2022-06-20 | 2022-06-21 | 463 |  |
| 465 | 6.9.3.4 | BANDEJA/REJILLA 100 MM ALTO X 200 MM ANCHO X 3 METROS DE ANCHO TERMINADO ELECTRO ZINC | manual | 31d | 2022-06-15 | 2022-07-17 | 462SS |  |
| 466 | 6.9.3.5 | SOPORTE BANDEJA/REJILLA 100 MM ALTO X 200 MM ANCHO | manual | 8d | 2022-07-18 | 2022-07-25 | 465 |  |
| 467 | 6.9.3.6 | ACCESORIOS PARA CURVAS Y DERIVACIONES DE BANDEJA/REJILLA 100 MM ALTO X 200 MM ANCHO X 3 METROS DE ANCHO TERMINADO ELECTRO ZINC | manual | 3d | 2022-07-26 | 2022-07-29 | 466 |  |
| 468 | 6.9.3.7 | TUBO CONDUIT EMT Ø 50mm. (2") | manual | 1d | 2022-07-30 | 2022-07-30 | 467 |  |
| 469 | 6.9.3.8 | ADAPTADOR TUBO CAJA PVC-SAP 100 mm Ø (4") P/INST. ELECTRICAS | manual | 2d | 2022-07-31 | 2022-08-01 | 468 |  |

| ID | WBS | Task | Type | Duration | Start | Finish | Predecessors | Total slack |
| --- | --- | --- | --- | --- | --- | --- | --- | --- |
| 470 | 6.9.4 | **CAJA DE PASE PARA TELECOMUNICACIONES** |  | 13d | 2022-08-02 | 2022-08-14 |  | 0d |
| 471 | 6.9.4.1 | CAJA DE PASE CUADRADA DE F°G° CON TAPA BISELADA DE 150x150x100 mm. | manual | 7d | 2022-08-02 | 2022-08-08 | 469 |  |
| 472 | 6.9.4.2 | CAJA DE PASE CUADRADA DE F°G° CON TAPA BISELADA DE 200x200x100 mm. | manual | 2d | 2022-08-09 | 2022-08-10 | 471 |  |
| 473 | 6.9.4.3 | ACCESORIO SALIDA BANDEJA | manual | 4d | 2022-08-11 | 2022-08-14 | 472 |  |
| 474 | 6.9.5 | **SALIDA DE TELECOMUNICACIONES** |  | 14d | 2022-08-15 | 2022-08-28 |  | 0d |
| 475 | 6.9.5.1 | SALIDA DE DATA | manual | 6d | 2022-08-15 | 2022-08-20 | 473 |  |
| 476 | 6.9.5.2 | SALIDA DE DATA PISO | manual | 5d | 2022-08-21 | 2022-08-25 | 475 |  |
| 477 | 6.9.5.3 | SALIDA DE DATA PARA ADOSAR | manual | 3d | 2022-08-26 | 2022-08-28 | 476 |  |
| 478 | 6.9.6 | **ACCESORIOS DE SALIDA DE TELECOMUNICACIONES** |  | 7d | 2022-08-29 | 2022-09-05 |  | 0d |
| 479 | 6.9.6.1 | PLACA SALIDA SIMPLE DE DATA | manual | 1d | 2022-08-29 | 2022-08-29 | 477 |  |
| 480 | 6.9.6.2 | PLACA SALIDA DOBLE DE DATA | manual | 3d | 2022-08-30 | 2022-09-01 | 479 |  |
| 481 | 6.9.6.3 | PLACA SALIDA SIMPLE DE DATA PISO | manual | 1d | 2022-09-02 | 2022-09-02 | 480 |  |
| 482 | 6.9.6.4 | PLACA SALIDA DOBLE DE DATA PISO | manual | 3d | 2022-09-03 | 2022-09-05 | 481 |  |
| 483 | 6.9.7 | **RACK/GABINETE DE TELECOMUNICACIONES** |  | 9d | 2022-09-06 | 2022-09-14 |  | 0d |
| 484 | 6.9.7.1 | GABINETE PRINCIPAL DE COMUNICACIONES (GDP) | manual | 2d | 2022-09-06 | 2022-09-07 | 482 |  |
| 485 | 6.9.7.2 | GABINETE SECUNDARIO DE COMUNICACIONES (GDS) | manual | 7d | 2022-09-08 | 2022-09-14 | 484 |  |
| 486 | 6.9.8 | **PATCH PANEL** |  | 313d | 2022-03-31 | 2023-02-17 |  | 0d |
| 487 | 6.9.8.1 | PATCH PANEL DE FIBRA OPTICA 08 HILOS | manual | 2d | 2022-03-31 | 2022-04-01 | 349SS |  |
| 488 | 6.9.8.2 | PATCH PANEL DE FIBRA OPTICA 4 HILOS | manual | 6d | 2022-03-31 | 2022-04-05 | 487SS |  |
| 489 | 6.9.8.3 | PATCH PANEL MODULAR DE 24 PUERTOS | manual | 8d | 2022-04-06 | 2022-04-13 | 488 |  |
| 490 | 6.9.8.4 | PATCH PANEL MODULAR DE 48 PUERTOS | manual | 11d | 2022-04-14 | 2022-04-25 | 489 |  |
| 491 | 6.9.8.5 | ORGANIZADOR DE CABLES HORIZONTAL, 2U. | manual | 20d | 2022-04-26 | 2022-05-15 | 490 |  |
| 492 | 6.9.8.6 | JACK CAT 6A | manual | 287d | 2022-04-02 | 2023-01-24 | 487 |  |
| 493 | 6.9.8.7 | PATCH CORD CAT 6A LSZH, 3 PIES | manual | 287d | 2022-04-02 | 2023-01-24 | 492SS |  |
| 494 | 6.9.8.8 | PATCH CORD DE F.O. LC-LC 2MT MULTIMODO OM4 | manual | 23d | 2023-01-26 | 2023-02-17 | 493 |  |
| 495 | 6.9.8.9 | PLACA PARA ESPACIOS VACIOS PK X 10 | manual | 16d | 2022-04-02 | 2022-04-19 | 487 |  |
| 496 | 6.9.8.10 | CINTA DE FIJACION 22.9 M. "VELCRO" | manual | 44d | 2022-04-20 | 2022-06-02 | 495 |  |
| 497 | 6.9.8.11 | TERMOCONTRACTIL PARA FUSION X 50 UND | manual | 1d | 2022-06-03 | 2022-06-03 | 496 |  |
| 498 | 6.9.8.12 | PIGTAIL DE F.O. | manual | 47d | 2022-06-04 | 2022-07-23 | 497 |  |

| ID | WBS | Task | Type | Duration | Start | Finish | Predecessors | Total slack |
| --- | --- | --- | --- | --- | --- | --- | --- | --- |
| 499 | 6.9.9 | **SERVICIO PARA CABLEADO ESTRUCTURADO** |  | 358d | 2022-02-03 | 2023-02-06 |  | 0d |
| 500 | 6.9.9.1 | SERVICIO DE CERTIFICACIÓN DE PUNTO DE RED CAT6A. | manual | 358d | 2022-02-03 | 2023-02-06 | 288SS |  |
| 501 | 6.9.9.2 | SERVICIO DE INSTALACIÓN DE JACK EN PATCH PANEL | manual | 348d | 2022-02-03 | 2023-01-27 | 500SS |  |
| 502 | 6.9.9.3 | SERVICIO DE FUSION DE HILOS DE CABLE DE FIBRA OPTICA EN MUFA Y PIGTAILS | manual | 46d | 2022-12-09 | 2023-01-23 | 501FF-0.01d |  |
| 503 | 6.9.9.4 | CERTIFICACION DE HILOS DE FIBRA OPTICA | manual | 1d | 2023-01-24 | 2023-01-24 | 502 |  |
| 504 | 6.9.9.5 | SERVICIO DE MIGRACION DE SISTEMAS ADMINISTRATIVOS | manual | 12d | 2023-01-25 | 2023-02-05 | 503 |  |
| 505 | 7 | **MOBILIARIO Y EQUIPAMIENTO** |  | 332d | 2022-03-25 | 2023-03-02 |  | 0d |
| 506 | 7.1 | **EQUIPAMIENTO** |  | 280d | 2022-05-14 | 2023-02-26 |  | 0d |
| 507 | 7.1.1 | LAPTOP DE INGENIERIA | manual | 12d | 2022-05-14 | 2022-05-25 | 501SS+0.21d |  |
| 508 | 7.1.2 | LAPTOP BASICA | manual | 45d | 2022-05-14 | 2022-06-30 | 507SS |  |
| 509 | 7.1.3 | IMPRESORA MULTIFUNCIONAL, COPIADORA | manual | 46d | 2022-05-14 | 2022-07-01 | 508SS |  |
| 510 | 7.1.4 | ESTABILIZADOR | manual | 80d | 2022-05-14 | 2022-08-06 | 509SS |  |
| 511 | 7.1.5 | FOTOCOPIADORA EN GENERAL | manual | 7d | 2022-08-07 | 2022-08-13 | 510 |  |
| 512 | 7.1.6 | ACUMULADOR DE ENERGIA - EQUIPO DE UPS | manual | 233d | 2022-05-14 | 2023-01-10 | 507SS |  |
| 513 | 7.1.7 | COMPUTADOR DE INGENIERIA | manual | 46d | 2023-01-12 | 2023-02-26 | 512 |  |
| 514 | 7.1.8 | COMPUTADORA BASICA | manual | 186d | 2022-05-26 | 2022-12-05 | 507 |  |
| 515 | 7.1.9 | MICROONDAS | manual | 9d | 2022-12-07 | 2022-12-16 | 514 |  |
| 516 | 7.1.10 | FRIGOBAR | manual | 8d | 2022-12-17 | 2022-12-24 | 515 |  |
| 517 | 7.2 | **MOBILIARIO** |  | 332d | 2022-03-25 | 2023-03-02 |  | 0d |
| 518 | 7.2.1 | SILLA PUBLICO | manual | 15d | 2022-03-25 | 2022-04-08 | 501SS+0.1d |  |
| 519 | 7.2.2 | JUEGO DE SILLAS SALA DE ESPERA | manual | 34d | 2022-03-25 | 2022-04-29 | 518SS |  |
| 520 | 7.2.3 | SILLA PARA ORIENTACION AL PUBLICO | manual | 15d | 2022-03-25 | 2022-04-08 | 519SS |  |
| 521 | 7.2.4 | MODULO DE ATENCION AL PUBLICO | manual | 12d | 2022-04-09 | 2022-04-22 | 520 |  |
| 522 | 7.2.5 | ESCRITORIO DE OFICINA | manual | 236d | 2022-04-09 | 2022-12-11 | 518 |  |
| 523 | 7.2.6 | ESCRITORIO DE GERENCIA | manual | 17d | 2022-04-09 | 2022-04-27 | 522SS |  |
| 524 | 7.2.7 | SILLA DE OFICINA | manual | 238d | 2022-04-28 | 2022-12-30 | 523 |  |
| 525 | 7.2.8 | SILLA DE GERENCIA | manual | 19d | 2023-01-01 | 2023-01-19 | 524 |  |
| 526 | 7.2.9 | MESA DE REUNIONES -20 PERS. | manual | 4d | 2023-01-20 | 2023-01-23 | 525 |  |
| 527 | 7.2.10 | SILLA PARA MESA DE REUNIONES | manual | 80d | 2022-12-13 | 2023-03-02 | 522 |  |
